# Drumlins- WBS PLAN

Schedule from MS Project, 2024-01-02 to 2024-04-30, costs in $.

## Calendars

- Standard: Mon-Fri 08:00-12:00, 13:00-17:00; Sat-Sun off.

## Schedule

| ID | WBS | Task | Type | Duration | Start | Finish | Predecessors | Total slack | Cost |
| --- | --- | --- | --- | --- | --- | --- | --- | --- | --- |
| 1 | 1 | **Drumlins Country Club Re-Design Project** |  | 86d? | 2024-01-02 | 2024-04-30 |  | 0d | 243,000 |
| 2 | 1.1 | **Pre - Construction Work** |  | 10d | 2024-01-02 | 2024-01-15 |  | 0d | 25,000 |
| 3 | 1.1.1 | Review Design Blueprints |  | 5d | 2024-01-02 | 2024-01-08 |  | 0d |  |
| 4 | 1.1.2 | Contractor Selection |  | 5d | 2024-01-09 | 2024-01-15 | 3 | 0d | 25,000 |
| 5 | 1.1.3 | Review Meeting | milestone | 0d | 2024-01-15 | 2024-01-15 | 4 | 76d |  |
| 6 | 1.2 | **Request For Quotes** |  | 5d | 2024-01-16 | 2024-01-22 |  | 0d |  |
| 7 | 1.2.1 | Lighting |  | 5d | 2024-01-16 | 2024-01-22 | 4 | 71d |  |
| 8 | 1.2.2 | HVAC (Heating & Air Conditioning ) |  | 5d | 2024-01-16 | 2024-01-22 | 4 | 71d |  |
| 9 | 1.2.3 | Electrical |  | 5d | 2024-01-16 | 2024-01-22 | 4 | 71d |  |
| 10 | 1.2.4 | Flooring |  | 5d | 2024-01-16 | 2024-01-22 | 4 | 71d |  |
| 11 | 1.2.5 | Plumbing |  | 5d | 2024-01-16 | 2024-01-22 | 4 | 71d |  |
| 12 | 1.2.6 | Painting |  | 5d | 2024-01-16 | 2024-01-22 | 4 | 71d |  |
| 13 | 1.2.7 | Windows & Doors |  | 5d | 2024-01-16 | 2024-01-22 | 4 | 71d |  |
| 14 | 1.2.8 | Building Supplies ( Dry Wall & Lumber ) |  | 5d | 2024-01-16 | 2024-01-22 | 4 | 71d |  |
| 15 | 1.2.9 | Kitchen Counter Tops |  | 5d | 2024-01-16 | 2024-01-22 | 4 | 71d |  |
| 16 | 1.2.10 | Bath Cabinets & Plumbing Fixtures |  | 5d | 2024-01-16 | 2024-01-22 | 4 | 0d |  |
| 17 | 1.3 | **Review Quotes** |  | 5d | 2024-01-23 | 2024-01-29 |  | 0d |  |
| 18 | 1.3.1 | Lighting |  | 5d | 2024-01-23 | 2024-01-29 | 16 | 66d |  |
| 19 | 1.3.2 | HVAC (Heating & Air Conditioning ) |  | 5d | 2024-01-23 | 2024-01-29 | 16 | 66d |  |
| 20 | 1.3.3 | Electrical |  | 5d | 2024-01-23 | 2024-01-29 | 16 | 66d |  |
| 21 | 1.3.4 | Flooring |  | 5d | 2024-01-23 | 2024-01-29 | 16 | 66d |  |
| 22 | 1.3.5 | Plumbing |  | 5d | 2024-01-23 | 2024-01-29 | 16 | 66d |  |
| 23 | 1.3.6 | Painting |  | 5d | 2024-01-23 | 2024-01-29 | 16 | 66d |  |
| 24 | 1.3.7 | Windows & Doors |  | 5d | 2024-01-23 | 2024-01-29 | 16 | 66d |  |
| 25 | 1.3.8 | Building Supplies ( Dry Wall & Lumber ) |  | 5d | 2024-01-23 | 2024-01-29 | 16 | 66d |  |
| 26 | 1.3.9 | Kitchen Counter Tops |  | 5d | 2024-01-23 | 2024-01-29 | 16 | 66d |  |
| 27 | 1.3.10 | Bath Cabinets & Plumbing Fixtures |  | 5d | 2024-01-23 | 2024-01-29 | 16 | 0d |  |

Notes:
- 1: This Project is about Redesign of Drumlins Country Club.
- 2: Pre-Construction wor begins
- 3: Design Blueprints are reviewed
- 4: Contractor Selection is done
- 5: Review Meeting to discuss with contractor on how to go about with the project.
- 6: Request for Quotes Begins
- 7: Lighting installment begins
- 8: HVAC(Heating & Air) installment begins
- 9: Electricial installment begins
- 10: Flooring work begins
- 11: Plumbing work begins
- 12: Painting work begins
- 13: Installment of new Windows and Doors begins
- 14: Building Supplies are installed
- 15: Kitchen Counter Tops are installed
- 16: Bath Cabinets & Plumbing Fixtures are installed
- 17: Review Quotes begins
- 18: Lighting is reviewed
- 19: HVAC (Heating & Air Conditioning ) is reviewed
- 20: Electrical installments are reviewed
- 21: Flooring is reviewed
- 22: Plumbing is reviewed
- 23: Painting is reviewed
- 24: Windows & Doors are reviewed
- 25: Building Supplies ( Dry Wall & Lumber ) are reviewed
- 26: Kitchen Counter Tops are reviewed
- 27: Bath Cabinets & Plumbing Fixtures are reviewed

| ID | WBS | Task | Type | Duration | Start | Finish | Predecessors | Total slack | Free slack | Cost |
| --- | --- | --- | --- | --- | --- | --- | --- | --- | --- | --- |
| 28 | 1.4 | **Award Contracts** |  | 0d | 2024-01-29 | 2024-01-29 |  | 0d |  |  |
| 29 | 1.4.1 | Finalise Contracts | milestone | 0d | 2024-01-29 | 2024-01-29 | 27 | 0d |  |  |
| 30 | 1.4.2 | Review Meeting | milestone | 0d | 2024-01-29 | 2024-01-29 | 27 | 66d |  |  |
| 31 | 1.4.3 | Project Milestone | milestone | 0d | 2024-01-29 | 2024-01-29 | 27 | 66d |  |  |
| 32 | 1.5 | **Interior Finishes** |  | 60d? | 2024-01-30 | 2024-04-22 |  | 0d |  | 195,000 |
| 33 | 1.5.1 | Replace Bar Top |  | 3d | 2024-01-30 | 2024-02-01 | 29 | 52d | 0d | 20,000 |
| 34 | 1.5.2 | Replace Footrest |  | 1d? | 2024-02-02 | 2024-02-02 | 33 | 52d | 0d | 5,000 |
| 35 | 1.5.3 | Refinish Bar Facia |  | 3d | 2024-02-05 | 2024-02-07 | 34 | 52d | 0d | 10,000 |
| 36 | 1.5.4 | Refinish Booths/Tables in Bistro |  | 10d | 2024-01-30 | 2024-02-12 | 29 | 0d |  | 10,000 |
| 37 | 1.5.5 | Remove Bulletin Boards |  | 1d? | 2024-02-08 | 2024-02-08 | 35 | 58d |  | 1,000 |
| 38 | 1.5.6 | Remove Shelves |  | 1d? | 2024-02-08 | 2024-02-08 | 35 | 58d |  | 1,000 |
| 39 | 1.5.7 | Remove Photos |  | 1d? | 2024-02-08 | 2024-02-08 | 35 | 52d | 0d | 1,000 |
| 40 | 1.5.8 | Install Lighting in Bistro |  | 1d? | 2024-02-09 | 2024-02-09 | 39 | 52d | 0d | 3,000 |
| 41 | 1.5.9 | Install Lighting in Locker Rooms |  | 5d | 2024-02-12 | 2024-02-16 | 40 | 52d |  | 5,000 |
| 42 | 1.5.10 | Install New Ventialtion in Bistro |  | 5d | 2024-02-13 | 2024-02-19 | 36 | 0d |  | 3,000 |
| 43 | 1.5.11 | Install Flat Screen Tv's in Bistro |  | 1d | 2024-02-20 | 2024-02-20 | 42 | 0d |  | 1,500 |
| 44 | 1.5.12 | Install Flat Screen Tv's in Bar |  | 2d | 2024-02-20 | 2024-02-21 | 42 | 44d | 0d | 1,500 |
| 45 | 1.5.13 | Install New Ventialtion in Bar |  | 5d | 2024-02-22 | 2024-02-28 | 44 | 44d |  | 3,000 |
| 46 | 1.5.14 | Install Doors |  | 3d | 2024-02-21 | 2024-02-23 | 43 | 0d |  | 2,500 |
| 47 | 1.5.15 | Review Meeting | milestone | 0d | 2024-02-23 | 2024-02-23 | 46 | 0d |  |  |
| 48 | 1.5.16 | Patch & Paint Walls / Ceilings in Locker Rooms |  | 10d | 2024-02-26 | 2024-03-08 | 47 | 37d |  | 10,000 |
| 49 | 1.5.17 | Patch & Paint Walls / Ceilings in Bathrooms |  | 6d | 2024-02-26 | 2024-03-04 | 47SS | 31d | 0d | 10,000 |
| 50 | 1.5.18 | Patch & Paint Walls / Ceilings in Bar |  | 5d | 2024-03-05 | 2024-03-11 | 49 | 31d | 0d | 10,000 |
| 51 | 1.5.19 | Patch & Paint Walls / Ceilings in Bistro |  | 5d | 2024-03-12 | 2024-03-18 | 50 | 31d |  | 10,000 |
| 52 | 1.5.20 | Patch & Paint Walls / Ceilings in Kitchen |  | 3d | 2024-02-26 | 2024-02-28 | 47 | 0d |  | 10,000 |
| 53 | 1.5.21 | Install Counter Tops/Sinks/Faucets in Bathrooms |  | 6d | 2024-02-29 | 2024-03-07 | 52 | 0d |  | 2,000 |
| 54 | 1.5.22 | Install Counter Tops/Sinks/Faucets in Locker Rooms |  | 3d | 2024-03-08 | 2024-03-12 | 53 | 0d |  | 2,000 |
| 55 | 1.5.23 | Install Hand Dryers |  | 2d | 2024-03-13 | 2024-03-14 | 54 | 0d |  | 2,000 |
| 56 | 1.5.24 | Install Mirrors in Bathrooms |  | 2d | 2024-03-15 | 2024-03-18 | 55 | 0d |  | 2,000 |
| 57 | 1.5.25 | Install Mirrors in Locker Rooms |  | 1d | 2024-03-19 | 2024-03-19 | 56 | 0d |  | 2,000 |
| 58 | 1.5.26 | Remove & Replace Lockers |  | 3d | 2024-03-20 | 2024-03-22 | 57 | 0d |  | 3,000 |
| 59 | 1.5.27 | Install New Benches in Each Locker Room |  | 2d | 2024-03-25 | 2024-03-26 | 58 | 0d |  | 2,000 |
| 60 | 1.5.28 | Replace Partitions Between Toilets (Restrooms) |  | 1d | 2024-03-25 | 2024-03-25 | 58 | 24d | 0d | 4,500 |
| 61 | 1.5.29 | Install New Shower Fixtures |  | 2d | 2024-03-26 | 2024-03-27 | 60 | 24d |  | 1,000 |
| 62 | 1.5.30 | Remove Old Flooring in Bar |  | 5d | 2024-03-27 | 2024-04-02 | 59 | 0d |  | 7,500 |
| 63 | 1.5.31 | Remove Old Flooring in Bistro |  | 5d | 2024-04-03 | 2024-04-09 | 62 | 0d |  | 7,500 |
| 64 | 1.5.32 | Remove Old Flooring In Kitchen |  | 5d | 2024-04-10 | 2024-04-16 | 63 | 10d |  | 7,500 |
| 65 | 1.5.33 | Remove Old Flooring in Bathrooms |  | 4d | 2024-03-27 | 2024-04-01 | 59 | 21d |  | 7,500 |
| 66 | 1.5.34 | Install Flooring in Bar |  | 5d | 2024-03-27 | 2024-04-02 | 62SS | 20d |  | 5,000 |
| 67 | 1.5.35 | Install Flooring In Bistro |  | 5d | 2024-04-03 | 2024-04-09 | 63SS | 0d |  | 5,000 |
| 68 | 1.5.36 | Install Flooring In Kitchen |  | 5d | 2024-04-03 | 2024-04-09 | 67SS | 0d |  | 5,000 |
| 69 | 1.5.37 | Install Flooring In Bathrooms |  | 6d | 2024-04-03 | 2024-04-10 | 68SS | 0d |  | 5,000 |
| 70 | 1.5.38 | Upgrade Electrical in Kitchen |  | 3d | 2024-04-10 | 2024-04-12 | 68 | 6d | 0d | 2,000 |
| 71 | 1.5.39 | Test & Certify Fire Protection System & Replace Sensors |  | 3d | 2024-04-15 | 2024-04-17 | 70 | 6d | 0d | 1,500 |
| 72 | 1.5.40 | Install Emergency Lighting in Bistro |  | 1d? | 2024-04-18 | 2024-04-18 | 71 | 6d | 0d | 1,500 |
| 73 | 1.5.41 | Install Emergency Lighting in Restrooms |  | 2d | 2024-04-19 | 2024-04-22 | 72 | 6d |  | 2,000 |

Notes:
- 28: Award Contractors begins
- 29: Contractors are finalized
- 30: Review Meeting before starting the re-design work of the club.
- 31: Finalised the contracts and procurred the materials.
- 32: Interior Finishes begins
- 33: Bar top is replaced
- 34: Footrest is replaced
- 35: Bar Facia is replaced
- 36: Booths/Tables in Bistro are refinished
- 37: Bulletin boards are removed
- 38: Shelves are removed
- 39: Photos are removed
- 40: Lighting is installed
- 42: New Ventialtion in Bistro is installed
- 43: Flat Screen TV's are installed
- 45: New Ventilation in Bar is installed
- 46: New Doors are installed
- 47: Review Meeeting about how the Interior Work is happening.
- 52: Patch & Paint Walls / Ceilings is done
- 54: Counter Tops/Sinks/Faucets is installed
- 55: Hand dryers are installed
- 57: Mirrors are installed
- 58: Lockers are removed and replaced
- 59: New Benches in Each Locker Room are installed
- 60: Partitions Between Toilets (Restrooms) is replaced
- 61: New Shower Fixtures are installed
- 65: Old Flooring is removed
- 69: Flooring is installed
- 70: ELectrical in Kitchen is upgraded
- 71: Fire Protection System & Replace Sensors are tested and certified
- 72: Emergency Lighting in Bistro are installed
- 73: Emergency Lighting in Restrooms are installed

| ID | WBS | Task | Type | Duration | Start | Finish | Predecessors | Total slack | Cost |
| --- | --- | --- | --- | --- | --- | --- | --- | --- | --- |
| 74 | 1.6 | **Exterior Finishes** |  | 2d | 2024-04-11 | 2024-04-15 |  | 0d | 3,000 |
| 75 | 1.6.1 | Install New Kitchen Fan Hoods |  | 2d | 2024-04-11 | 2024-04-12 | 69 | 0d | 3,000 |
| 76 | 1.6.2 | Review Meeting | milestone, manual | 0d | 2024-04-15 | 2024-04-15 | 75 |  |  |
| 77 | 1.7 | **Final Testing / Walk Through** |  | 12d? | 2024-04-15 | 2024-04-30 |  | 0d | 20,000 |
| 78 | 1.7.1 | Test Plumbing |  | 1d? | 2024-04-15 | 2024-04-15 | 75 | 0d |  |
| 79 | 1.7.2 | Test Electrical & Lighting |  | 1d? | 2024-04-16 | 2024-04-16 | 78 | 0d |  |
| 80 | 1.7.3 | Test HVAC & Mechanicals |  | 2d | 2024-04-17 | 2024-04-18 | 79 | 0d |  |
| 81 | 1.7.4 | Review "Punch List" of Items |  | 2d | 2024-04-19 | 2024-04-22 | 80 | 0d |  |
| 82 | 1.7.5 | Complete/Fix Punch List of Items |  | 5d | 2024-04-23 | 2024-04-29 | 81 | 0d |  |
| 83 | 1.7.6 | Obtain Certificate of Occupancy |  | 1d? | 2024-04-30 | 2024-04-30 | 82 | 0d |  |
| 84 | 1.7.7 | Milestone Review | milestone, manual | 0d | 2024-04-30 | 2024-04-30 | 83SS |  | 20,000 |
| 85 | 1.7.8 | Celebrate | milestone | 0d | 2024-04-30 | 2024-04-30 | 83 | 0d |  |

Notes:
- 74: Exterior work begins
- 75: New Kitchen Fan Hoods are installed
- 77: Final testing and walk through are done
- 78: Plumbing is tested
- 79: Electrical & Lighting are tested
- 80: HVAC & Mechanicals are tested
- 81: "Punch List" of Items is reviewed
- 82: List of Items is completed/Fix punched
- 83: Certificate of Occupancy is obtained
- 85: Hurray!! The Re-modeling of Drumlins Club project is completed.
